# PRD2017G09-软件工程系列课程教学辅助网站-需求项目计划甘特图V1.7

Schedule from MS Project, 2017-09-28 to 2018-01-16, status date 2017-10-28, 1 hours a day, costs in ¥, A marks actual dates.
Microsoft

## Calendars

- 标准: Mon-Fri 20:00-21:00; Sat-Sun 18:00-21:00. Exceptions (off unless hours are given): 2017-09-28 to 2018-01-12 18:00-21:00 (recurring), 2017-10-01 to 2017-10-08 (国庆节), 2017-12-30 to 2018-01-01 (元旦).

## Resources

| Resource | Rate |
| --- | --- |
| 奕吉 | 30.97 |
| 张旗 | 30.97 |
| 于欣汝 | 30.97 |
| 靳泽旭 | 30.97 |
| 曾雨晴 | 30.97 |

## Schedule

| ID | WBS | Task | Type | Duration | Start | Finish | Predecessors | Complete | Remaining | Actual start | Actual finish | Resources | Work | Actual work | Cost | Actual cost | 总负责人 | 任务描述 |
| --- | --- | --- | --- | --- | --- | --- | --- | --- | --- | --- | --- | --- | --- | --- | --- | --- | --- | --- |
| 1 | 1 | **软件工程系列课程教学辅助网站** |  | 154d | 2017-09-28 20:00 A | 2018-01-16 21:00 |  | 43% | 88d |  |  |  | 311.8h | 154.2h | 9,656.45 | 4,775.57 | 奕吉 |  |
| 2 | 1.1 | **项目前期准备** |  | 6h | 2017-09-28 20:00 A | 2017-10-04 21:00 |  | 100% |  |  | 2017-10-03 21:00 |  | 11h | 11h | 340.67 | 340.67 | 奕吉 |  |
| 3 | 1.1.1 | **项目范围选定** |  | 1h | 2017-09-28 20:00 A | 2017-09-28 21:00 A |  | 100% |  |  |  |  | 2h | 2h | 61.94 | 61.94 | 曾雨晴 |  |
| 4 | 1.1.1.1 | 类似项目案例分析 | manual | 1h | 2017-09-28 20:00 A | 2017-09-28 21:00 A |  | 100% |  |  |  | 曾雨晴 [80%]; 奕吉 [20%] | 1h | 1h | 30.97 | 30.97 | 曾雨晴 | 对以前类似的方案进行分析 |
| 5 | 1.1.1.2 | 小组第一周会议（讨论项目选题和后期分配资源） | manual | 1h | 2017-09-28 20:00 A | 2017-09-28 21:00 A | 4 | 100% |  |  |  | 奕吉; 靳泽旭; 于欣汝; 曾雨晴; 张旗 | 1h | 1h | 30.97 | 30.97 |  | 小组周一会议 |
| 6 | 1.1.2 | 获取项目开发硬件资源 | manual | 5h | 2017-09-29 20:00 A | 2017-10-03 21:00 A | 3 | 100% |  |  |  | 张旗 [30%]; 于欣汝 [70%] | 5h | 5h | 154.85 | 154.85 | 于欣汝 | 准备软件开发硬件资源 |
| 7 | 1.1.3 | logo设计 | manual | 4h | 2017-09-29 20:00 A | 2017-09-30 21:00 A | 3 | 100% |  |  |  | 靳泽旭 | 4h | 4h | 123.88 | 123.88 | 靳泽旭 | 设计小组logo |
| 8 | 1.1.4 | 项目选定和开发软硬件的获得 | milestone, manual | 0d | 2017-10-03 20:00 A | 2017-10-03 20:00 A | 6 | 100% |  |  |  | 奕吉 |  |  |  |  | 奕吉 | 确定项目和获取硬件 |
| 9 | 1.2 | 小组第二周第一次会议记录 | manual | 1h | 2017-10-09 17:00 A | 2017-10-09 18:00 A |  | 100% |  |  |  | 曾雨晴; 靳泽旭; 奕吉; 于欣汝; 张旗 | 1h | 1h | 30.97 | 30.97 |  | 小组周一例会 |
| 10 | 1.3 | 小组第二周第二次会议记录 | manual | 1h | 2017-10-13 20:00 A | 2017-10-13 21:00 A |  | 100% |  |  |  | 曾雨晴; 靳泽旭; 奕吉; 于欣汝; 张旗 | 1h | 1h | 30.97 | 30.97 |  | 小组周五例会 |
| 11 | 1.4 | **项目计划** |  | 32d | 2017-10-10 20:00 | 2017-10-29 21:00 | 8 | 97% | 1.03d | 2017-10-09 20:00 |  |  | 38h | 37h | 1,176.86 | 1,145.89 | 曾雨晴 |  |
| 12 | 1.4.1 | 甘特图绘制V0.1 | manual | 4h | 2017-10-09 20:00 A | 2017-10-12 21:00 A | 2 | 100% |  |  |  | 曾雨晴 | 4h | 4h | 123.88 | 123.88 | 曾雨晴 | 初步甘特图绘制 |
| 13 | 1.4.2 | WBS绘制 | manual | 2h | 2017-10-13 20:00 A | 2017-10-14 19:00 A | 12 | 100% |  |  |  | 奕吉 | 2h | 2h | 61.94 | 61.94 | 奕吉 | 初步绘制wbs |
| 14 | 1.4.3 | OBS绘制 | manual | 2h | 2017-10-14 19:00 A | 2017-10-14 21:00 A | 13 | 100% |  |  |  | 靳泽旭 | 2h | 2h | 61.94 | 61.94 | 靳泽旭 | 初步绘制obs |
| 15 | 1.4.4 | 风险管理 | manual | 2h | 2017-10-13 20:00 A | 2017-10-14 19:00 A | 12 | 100% |  |  |  | 于欣汝 | 2h | 2h | 61.94 | 61.94 | 于欣汝 | 对项目风险进行初步管理 |
| 16 | 1.4.5 | 版本控制系统配置 | manual | 3h | 2017-10-11 20:00 A | 2017-10-13 21:00 A | 12 | 100% |  |  |  | 曾雨晴 | 3h | 3h | 92.91 | 92.91 | 曾雨晴 | sourcetree配置管理 |
| 17 | 1.4.6 | 项目计划V0.1 | milestone, manual | 0d | 2017-10-15 20:00 A | 2017-10-15 20:00 A | 2 | 100% |  |  |  | 曾雨晴 [50%]; 于欣汝 [50%] |  |  |  |  | 于欣汝 | 初步编写项目计划 |
| 18 | 1.4.7 | 甘特图完善V0.2 | manual | 3h | 2017-10-17 20:00 A | 2017-10-19 21:00 A | 17 | 100% |  |  |  | 曾雨晴 [60%]; 奕吉 [40%] | 3h | 3h | 92.91 | 92.91 | 曾雨晴 | 完善甘特图 |
| 19 | 1.4.8 | 项目计划完善V0.2 | milestone, manual | 0h | 2017-10-20 20:00 A | 2017-10-20 20:00 A | 18 | 100% |  |  |  | 曾雨晴 |  |  |  |  | 曾雨晴 | 完善项目计划 |
| 20 | 1.4.9 | 项目第一次与下达者访谈 | manual | 1d | 2017-10-20 20:00 A | 2017-10-20 21:00 A |  | 100% |  |  |  | 曾雨晴; 靳泽旭; 奕吉; 于欣汝; 张旗 | 5h | 5h | 154.85 | 154.85 |  |  |
| 21 | 1.4.10 | 小组第三周第一次会议 | manual | 1d | 2017-10-20 12:00 A | 2017-10-20 13:00 A |  | 100% |  |  |  | 曾雨晴; 靳泽旭; 奕吉; 于欣汝; 张旗 | 1h | 1h | 30.97 | 30.97 |  | 小组周一会议 |
| 22 | 1.4.11 | 小组第三周第二次会议 | manual | 1d | 2017-10-20 20:00 A | 2017-10-20 21:00 A |  | 100% |  |  |  | 曾雨晴; 靳泽旭; 奕吉; 于欣汝; 张旗 | 1h | 1h | 30.97 | 30.97 |  | 小组周五会议 |
| 23 | 1.4.12 | 小组第四周第一次会议 | manual | 1d | 2017-10-23 17:00 A | 2017-10-23 18:00 A |  | 100% |  |  |  | 曾雨晴; 靳泽旭; 奕吉; 于欣汝; 张旗 | 1h | 1h | 30.97 | 30.97 |  | 小组周一会议 |
| 24 | 1.4.13 | 质量保证计划 | manual | 1h | 2017-10-23 20:00 A | 2017-10-23 21:00 A | 19 | 100% |  |  |  | 张旗 | 1h | 1h | 30.97 | 30.97 | 张旗 | 初步编写质量保证计划 |
| 25 | 1.4.14 | 人力资源配置 | manual | 1h | 2017-10-23 20:00 A | 2017-10-23 21:00 A | 19 | 100% |  |  |  | 于欣汝 | 1h | 1h | 30.97 | 30.97 | 于欣汝 | 对组员进行合理资源分配 |
| 26 | 1.4.15 | 成本预算 | manual | 1h | 2017-10-26 20:00 A | 2017-10-26 21:00 A | 24 | 100% |  |  |  | 张旗 | 1h | 1h | 30.97 | 30.97 | 张旗 | 初步估算成本 |
| 27 | 1.4.16 | 甘特图完善V1.0 | manual | 3h | 2017-10-27 20:00 A | 2017-10-28 20:00 A | 26 | 100% |  |  |  | 曾雨晴 [40%]; 奕吉 [60%] | 3h | 3h | 92.91 | 92.91 | 奕吉 | 继续完善甘特图 |
| 28 | 1.4.17 | WBS、OBS修改 | manual | 4h | 2017-10-28 20:00 A | 2017-10-29 21:00 | 27 | 75% | 1h |  |  | 曾雨晴 [20%]; 靳泽旭 [80%] | 7h | 6h | 216.79 | 185.82 | 靳泽旭 | 修改wbs和obs图 |
| 29 | 1.4.18 | 项目计划完善V1.0 | milestone, manual | 0h | 2017-10-28 20:00 A | 2017-10-28 20:00 A | 27 | 100% |  |  |  | 曾雨晴 [50%]; 于欣汝 [50%] |  |  |  |  | 于欣汝 | 进一步完善项目计划 |
| 30 | 1.4.19 | 小组第四周第二次会议 | manual | 1h | 2017-10-27 19:30 A | 2017-10-27 20:30 A |  | 100% |  |  |  | 曾雨晴; 靳泽旭; 奕吉; 于欣汝; 张旗 | 1h | 1h | 30.97 | 30.97 |  | 小组周五会议 |
| 31 | 1.4.20 | 项目章程 | milestone, manual | 0h | 2017-10-27 20:00 A | 2017-10-27 20:00 A | 29 | 100% |  |  |  | 曾雨晴 [60%]; 奕吉 [40%] |  |  |  |  | 曾雨晴 | 编写项目章程，对项目经理授权 |
| 32 | 1.4.21 | 项目启动 | milestone, manual | 0d | 2017-10-27 20:00 | 2017-10-27 20:00 | 31 |  |  |  |  |  |  |  |  |  |  |  |
| 33 | 1.5 | 需求工程计划-初步 | milestone, manual | 0h | 2017-10-26 20:00 A | 2017-10-26 20:00 A | 32 | 100% |  |  |  | 于欣汝 |  |  |  |  | 于欣汝 | 对需求进行初步编写 |
| 34 | 1.6 | QA计划初步 | milestone, manual | 0h | 2017-10-28 20:00 A | 2017-10-28 20:00 A | 24 | 100% |  |  |  | 张旗 |  |  |  |  | 张旗 | 软件质量和保证初步计划 |

| ID | WBS | Task | Type | Duration | Start | Finish | Predecessors | Complete | Remaining | Actual start | Resources | Work | Actual work | Cost | Actual cost | 总负责人 | 任务描述 |
| --- | --- | --- | --- | --- | --- | --- | --- | --- | --- | --- | --- | --- | --- | --- | --- | --- | --- |
| 35 | 1.7 | **需求工程** |  | 90d | 2017-10-29 20:00 | 2017-12-25 21:00 | 33 | 31% | 61.91d | 2017-10-28 20:00 |  | 235.8h | 104.2h | 7,302.73 | 3,227.07 | 于欣汝 |  |
| 36 | 1.7.1 | 小组第五周第一次会议 | manual | 1h | 2017-10-30 17:00 A | 2017-10-30 18:00 A |  | 100% |  |  | 曾雨晴; 靳泽旭; 奕吉; 于欣汝; 张旗 | 5h | 5h | 154.85 | 154.85 |  | 小组周五例会 |
| 37 | 1.7.2 | **需求获取活动** |  | 46d | 2017-10-29 20:00 | 2017-11-27 21:00 |  | 90% | 4.6d | 2017-10-28 20:00 |  | 43.6h | 41h | 1,350.29 | 1,269.77 | 奕吉 |  |
| 38 | 1.7.2.1 | **建立业务需求** |  | 8h | 2017-10-30 20:00 | 2017-11-04 21:00 |  | 33% | 5.33h | 2017-10-28 20:00 |  | 2.6h | 1h | 80.52 | 30.97 | 奕吉 |  |
| 39 | 1.7.2.1.1 | **定义产品愿景和项目范围** |  | 5h | 2017-10-30 20:00 | 2017-11-03 21:00 |  |  |  |  |  | 1.6h |  | 49.55 |  | 于欣汝 |  |
| 40 | 1.7.2.1.1.1 | 建立业务目标模型 | manual | 1h | 2017-10-30 20:00 | 2017-10-30 21:00 | 36 |  |  |  | 张旗 | 1h |  | 30.97 |  |  | 顶一个网站的小目标 |
| 41 | 1.7.2.1.1.2 | 干系人评审模型 | manual | 1h | 2017-11-02 20:00 | 2017-11-02 21:00 | 40 |  |  |  | 曾雨晴 [20%]; 靳泽旭 [20%]; 奕吉 [20%]; 于欣汝 [20%]; 张旗 [20%] | 0.6h |  | 18.58 |  |  | 建立干系人评审模型 |
| 42 | 1.7.2.1.1.3 | 项目愿景与范围文档 | milestone, manual | 0d | 2017-10-28 20:00 | 2017-10-28 20:00 | 34 |  |  |  | 曾雨晴; 奕吉 |  |  |  |  |  |  |
| 43 | 1.7.2.1.2 | 解决业务需求冲突 | manual | 1h | 2017-11-04 20:00 A | 2017-11-04 21:00 A | 41 | 100% |  |  | 靳泽旭 | 1h | 1h | 30.97 | 30.97 | 靳泽旭 | 对一些有冲突的需求进行调节 |
| 44 | 1.7.2.2 | **识别用户群** |  | 2h | 2017-10-31 20:00 | 2017-11-01 21:00 A | 42 | 100% |  | 2017-10-28 20:00 |  | 3h | 3h | 92.91 | 92.91 | 于欣汝 |  |
| 45 | 1.7.2.2.1 | 选择产品代言人，记录产品代言人的期望 | manual | 1h | 2017-10-28 20:00 A | 2017-10-28 21:00 A | 34 | 100% |  |  | 曾雨晴 | 1h | 1h | 30.97 | 30.97 |  | 选择产品代言人，记录代言人的软件期望 |
| 46 | 1.7.2.2.2 | 用户分类 | manual | 1h | 2017-10-31 20:00 A | 2017-10-31 21:00 A | 40 | 100% |  |  | 于欣汝 | 1h | 1h | 30.97 | 30.97 |  | 给用户进行分类 |
| 47 | 1.7.2.2.3 | 识别用户类别 | manual | 1h | 2017-11-01 20:00 A | 2017-11-01 21:00 A | 46 | 100% |  |  | 张旗 | 1h | 1h | 30.97 | 30.97 |  | 用户类别进行分类 |
| 48 | 1.7.2.3 | 举行引导式需求获取讨论会 | manual | 1d | 2017-11-02 20:00 A | 2017-11-02 21:00 A | 47 | 100% |  |  | 张旗 [80%]; 奕吉 [20%] | 1h | 1h | 30.97 | 30.97 |  | 举行对需求的讨论会 |
| 49 | 1.7.2.4 | QA计划 | milestone, manual | 0h | 2017-11-02 20:00 A | 2017-11-02 20:00 A | 47 | 100% |  |  | 奕吉 |  |  |  |  |  | 软件质量和保护计划 |
| 50 | 1.7.2.5 | 小组第五周第二次会议 | milestone, manual | 0h | 2017-11-03 20:00 A | 2017-11-03 21:00 A | 48 | 100% |  |  | 曾雨晴; 靳泽旭; 奕吉; 于欣汝; 张旗 | 3h | 3h | 92.91 | 92.91 |  | 小组周五会议 |
| 51 | 1.7.2.6 | 相关文档修改 | manual | 1d | 2017-11-05 20:00 A | 2017-11-05 21:00 A |  | 100% |  |  | 曾雨晴; 靳泽旭; 奕吉; 于欣汝; 张旗 | 5h | 5h | 154.85 | 154.85 |  |  |
| 52 | 1.7.2.7 | 组织焦点小组 | manual | 1h | 2017-11-04 18:00 A | 2017-11-04 19:00 A | 50 | 100% |  |  | 靳泽旭 | 1h | 1h | 30.97 | 30.97 |  | 组织曾经使用或者开发过的小组 |
| 53 | 1.7.2.8 | 识别用户需求 | manual | 1d | 2017-11-04 18:00 A | 2017-11-04 19:00 A | 50 | 100% |  |  | 张旗 | 1h | 1h | 30.97 | 30.97 |  | 识别用户的需求 |
| 54 | 1.7.2.9 | 识别系统事件和响应 | manual | 3h | 2017-11-04 18:00 A | 2017-11-04 21:00 A | 50 | 100% |  |  | 奕吉 | 3h | 3h | 92.91 | 92.91 |  | 识别系统的时间和响应时间 |
| 55 | 1.7.2.10 | 观察用户如何完成工作 | manual | 4d | 2017-11-04 18:00 A | 2017-11-05 19:00 A | 50 | 100% |  |  | 曾雨晴 | 4h | 4h | 123.88 | 123.88 |  | 观察用户使用网站 |
| 56 | 1.7.2.11 | 分发问卷调查 | manual | 1d | 2017-11-04 18:00 A | 2017-11-04 19:00 A | 50 | 100% |  |  | 张旗 | 1h | 1h | 30.97 | 30.97 |  | 分发问卷调查给四类人进行调查 |
| 57 | 1.7.2.12 | 举办需求获取访谈 | manual | 3h | 2017-11-05 18:00 A | 2017-11-05 21:00 A | 54 | 100% |  |  | 奕吉 [50%]; 靳泽旭 [50%] | 3h | 3h | 92.91 | 92.91 |  | 举行需求获取访谈 |
| 58 | 1.7.2.13 | 分析文档 | manual | 1d | 2017-11-05 18:00 A | 2017-11-05 19:00 A | 56 | 100% |  |  | 张旗 | 1h | 1h | 30.97 | 30.97 |  | 分析已用的报告 |
| 59 | 1.7.2.14 | 项目第二次与项目下达者访谈 | manual | 1d | 2017-11-06 20:00 A | 2017-11-06 21:00 A |  | 100% |  |  | 曾雨晴; 靳泽旭; 奕吉; 于欣汝; 张旗 | 5h | 5h | 154.85 | 154.85 |  |  |
| 60 | 1.7.2.15 | 检查问题报告 | manual | 1h | 2017-11-07 20:00 | 2017-11-07 21:00 |  |  |  |  | 于欣汝 | 1h |  | 30.97 |  |  | 检查报告中有问题的地方并改正 |
| 61 | 1.7.2.16 | 学生用户代表访谈 | manual | 2h | 2017-11-18 20:00 A | 2017-11-19 19:00 A |  | 100% |  |  | 靳泽旭 | 2h | 2h | 61.94 | 61.94 |  | 延后了两个星期 |
| 62 | 1.7.2.17 | 游客用户代表访谈 | manual | 1h | 2017-11-18 20:00 A | 2017-11-18 21:00 A |  | 100% |  |  | 靳泽旭 | 1h | 1h | 30.97 | 30.97 |  | 延后了两个星期 |
| 63 | 1.7.2.18 | 教师用户代表访谈 | manual | 1h | 2017-11-27 20:00 A | 2017-11-27 21:00 A |  | 100% |  |  | 奕吉 | 1h | 1h | 30.97 | 30.97 |  | 对教师进行访问 |
| 64 | 1.7.2.19 | 管理员用户代表第一次访谈 | manual | 1h | 2017-11-24 20:00 A | 2017-11-24 21:00 A |  | 100% |  |  | 曾雨晴; 靳泽旭; 奕吉; 于欣汝; 张旗 | 5h | 5h | 154.85 | 154.85 | 曾雨晴 | 对管理员进行访问 |

| ID | WBS | Task | Type | Duration | Start | Finish | Predecessors | Complete | Remaining | Resources | Work | Actual work | Cost | Actual cost | 总负责人 | 任务描述 |
| --- | --- | --- | --- | --- | --- | --- | --- | --- | --- | --- | --- | --- | --- | --- | --- | --- |
| 65 | 1.7.3 | **需求分析** |  | 45d | 2017-10-31 20:00 A | 2017-11-28 21:00 | 37 | 38% | 28.12d |  | 62.2h | 38.2h | 1,926.33 | 1,183.05 | 靳泽旭 |  |
| 66 | 1.7.3.1 | **应用环境建模（生态环境图）** |  | 11d | 2017-10-31 20:00 A | 2017-11-06 21:00 A |  | 100% |  | 奕吉 [50%]; 曾雨晴 [50%] | 18h | 18h | 557.46 | 557.46 | 奕吉 | 绘制生态环境图 |
| 67 | 1.7.3.1.1 | 绘制管理员用例图 | manual | 2d | 2017-11-05 20:00 A | 2017-11-06 21:00 A |  | 100% |  | 曾雨晴 | 2h | 2h | 61.94 | 61.94 |  |  |
| 68 | 1.7.3.1.2 | 绘制部分初步定义类图 | manual | 2d | 2017-11-05 20:00 A | 2017-11-06 21:00 A |  | 100% |  | 靳泽旭 | 2h | 2h | 61.94 | 61.94 |  |  |
| 69 | 1.7.3.1.3 | 绘制部分系统状态图、部署图 | manual | 1d | 2017-11-04 20:00 A | 2017-11-04 21:00 A |  | 100% |  | 奕吉 | 1h | 1h | 30.97 | 30.97 |  |  |
| 70 | 1.7.3.1.4 | 绘制部分初步定义顺序图、协作图 | manual | 1d | 2017-11-05 20:00 A | 2017-11-05 21:00 A |  | 100% |  | 曾雨晴 | 1h | 1h | 30.97 | 30.97 |  |  |
| 71 | 1.7.3.1.5 | 绘制部分初步定义用例图 | manual | 1d | 2017-11-05 20:00 A | 2017-11-05 21:00 A |  | 100% |  | 张旗 | 1h | 1h | 30.97 | 30.97 |  |  |
| 72 | 1.7.3.2 | 创建移动端界面原型 | manual | 1h | 2017-11-25 20:00 A | 2017-11-25 21:00 A | 50 | 100% |  | 靳泽旭 | 0.2h | 0.2h | 6.19 | 6.19 | 靳泽旭 | 创建需求原型 |
| 73 | 1.7.3.3 | 创建平台端界面原型 | manual | 4d | 2017-11-25 20:00 | 2017-11-26 21:00 |  |  |  | 于欣汝 | 4h |  | 123.88 |  |  |  |
| 74 | 1.7.3.4 | 分析可实现性 | manual | 1d | 2017-11-26 18:00 | 2017-11-26 19:00 | 66, 72 |  |  | 奕吉 | 1h |  | 30.97 |  | 奕吉 | 分析需求实现的可行性 |
| 75 | 1.7.3.5 | 项目第一次与教师用户代表访谈 | manual | 1d | 2017-11-27 20:00 A | 2017-11-27 21:00 A |  | 100% |  | 曾雨晴; 靳泽旭; 奕吉; 于欣汝; 张旗 | 5h | 5h | 154.85 | 154.85 |  |  |
| 76 | 1.7.3.6 | 小组第六周第一次会议 | manual | 1h | 2017-11-06 17:00 A | 2017-11-06 18:00 A |  | 100% |  | 曾雨晴; 靳泽旭; 奕吉; 于欣汝; 张旗 | 5h | 5h | 154.85 | 154.85 |  | 小组周一会议 |
| 77 | 1.7.3.7 | 需求工程计划-修改 | manual | 1h | 2017-11-09 20:00 | 2017-11-09 21:00 | 64 |  |  | 奕吉 | 1h |  | 30.97 |  | 奕吉 | 修改需求工程计划 |
| 78 | 1.7.3.8 | 小组第六周第二次会议 | manual | 1h | 2017-11-10 20:00 A | 2017-11-10 21:00 A |  | 100% |  | 曾雨晴; 靳泽旭; 奕吉; 于欣汝; 张旗 | 5h | 5h | 154.85 | 154.85 |  | 小组周五会议 |
| 79 | 1.7.3.9 | 排列需求优先级 | manual | 1d | 2017-11-11 20:00 | 2017-11-11 21:00 |  |  |  | 曾雨晴 | 1h |  | 30.97 |  | 曾雨晴 | 对需求优先级进行排列 |
| 80 | 1.7.3.10 | 相关文档修改、绘制uml图 | manual | 1d | 2017-11-12 20:00 | 2017-11-12 21:00 |  |  |  | 曾雨晴; 靳泽旭; 奕吉; 于欣汝; 张旗 | 5h |  | 154.85 |  |  | 小组新一周分工 |
| 81 | 1.7.3.11 | 创建数据字典和ER图 | manual | 4h | 2017-11-14 20:00 | 2017-11-17 21:00 |  |  |  | 张旗 [80%]; 奕吉 [20%] | 4h |  | 123.88 |  | 张旗 | 创建数据字典和ER图 |
| 82 | 1.7.3.12 | 小组第七周第一次会议 | manual | 1h | 2017-11-13 17:00 A | 2017-11-13 18:00 A |  | 100% |  | 曾雨晴; 靳泽旭; 奕吉; 于欣汝; 张旗 | 5h | 5h | 154.85 | 154.85 |  | 小组周一会议 |
| 83 | 1.7.3.13 | 需求工程计划 | milestone, manual | 0d | 2017-11-18 18:00 | 2017-11-18 18:00 | 77 |  |  | 靳泽旭 |  |  |  |  | 靳泽旭 | 完成需求工程计划 |
| 84 | 1.7.3.14 | **需求建模** |  | 9d | 2017-11-11 20:00 | 2017-11-17 21:00 |  |  |  |  | 5h |  | 154.85 |  | 曾雨晴 |  |
| 85 | 1.7.3.14.1 | 数据流图绘制 | manual | 1h | 2017-11-12 20:00 | 2017-11-12 21:00 |  |  |  | 奕吉 | 1h |  | 30.97 |  | 奕吉 | 绘制数据流图 |
| 86 | 1.7.3.14.2 | 转态转移图 | manual | 3h | 2017-11-11 20:00 | 2017-11-12 20:00 |  |  |  | 靳泽旭 | 3h |  | 92.91 |  | 靳泽旭 | 绘制状态转移图 |
| 87 | 1.7.3.14.3 | 决策树 | manual | 1h | 2017-11-12 20:00 | 2017-11-12 21:00 |  |  |  | 于欣汝 | 1h |  | 30.97 |  | 于欣汝 | 绘制决策树 |
| 88 | 1.7.3.15 | 分析接口 | manual | 1d | 2017-11-11 20:00 | 2017-11-11 21:00 |  |  |  | 张旗 | 1h |  | 30.97 |  | 张旗 | 分析接口 |
| 89 | 1.7.3.16 | 将需求分配到子系统 | manual | 2h | 2017-11-14 20:00 | 2017-11-15 21:00 |  |  |  | 靳泽旭 [70%]; 曾雨晴 [30%] | 2h |  | 61.94 |  | 曾雨晴 | 分配需求 |

| ID | WBS | Task | Type | Duration | Start | Finish | Predecessors | Complete | Remaining | Resources | Work | Actual work | Cost | Actual cost | 总负责人 | 任务描述 |
| --- | --- | --- | --- | --- | --- | --- | --- | --- | --- | --- | --- | --- | --- | --- | --- | --- |
| 90 | 1.7.4 | **规范说明** |  | 21h | 2017-11-16 20:00 A | 2017-11-28 21:00 | 65 | 44% | 11.67h |  | 25h | 20h | 774.25 | 619.4 | 于欣汝 |  |
| 91 | 1.7.4.1 | 小组第七周第二次会议 | manual | 1h | 2017-11-18 20:00 A | 2017-11-18 21:00 A |  | 100% |  | 曾雨晴; 靳泽旭; 奕吉; 于欣汝; 张旗 | 5h | 5h | 154.85 | 154.85 |  | 小组周五会议 |
| 92 | 1.7.4.2 | 采用需求文档模板 | manual | 1d | 2017-11-18 20:00 | 2017-11-18 21:00 |  |  |  | 奕吉 | 1h |  | 30.97 |  | 奕吉 | 使用对应的需求模板 |
| 93 | 1.7.4.3 | 识别需求源头 | manual | 1h | 2017-11-19 18:00 | 2017-11-19 19:00 | 92 |  |  | 靳泽旭 | 1h |  | 30.97 |  | 靳泽旭 | 查找提出需求的源头 |
| 94 | 1.7.4.4 | 为每个需求分配唯一标示 | manual | 1h | 2017-11-19 19:00 | 2017-11-19 20:00 | 93 |  |  | 于欣汝 | 1h |  | 30.97 |  | 于欣汝 | 为查找到的需求进行标记 |
| 95 | 1.7.4.5 | 记录业务规则 | manual | 1h | 2017-11-16 20:00 | 2017-11-16 21:00 |  |  |  | 曾雨晴 | 1h |  | 30.97 |  | 曾雨晴 | 记录过程中的一些规则 |
| 96 | 1.7.4.6 | 描述非功能性需求 | manual | 1h | 2017-11-19 20:00 | 2017-11-27 21:00 |  |  |  | 张旗 | 1h |  | 30.97 |  | 张旗 | 记录识别需求中的非功能性需求 |
| 97 | 1.7.4.7 | 小组第八周第一次会议 | manual | 1h | 2017-11-20 17:00 A | 2017-11-20 18:00 A |  | 100% |  | 曾雨晴; 靳泽旭; 奕吉; 于欣汝; 张旗 | 5h | 5h | 154.85 | 154.85 |  | 小组周一会议 |
| 98 | 1.7.4.8 | 小组第八周第二次会议 | manual | 1h | 2017-11-24 20:00 A | 2017-11-24 21:00 A |  | 100% |  | 曾雨晴; 靳泽旭; 奕吉; 于欣汝; 张旗 | 5h | 5h | 154.85 | 154.85 |  | 小组周五会议 |
| 99 | 1.7.4.9 | 小组第一次管理员用户代表访谈 | manual | 1d | 2017-11-24 20:00 A | 2017-11-24 21:00 A |  | 100% |  | 曾雨晴; 靳泽旭; 奕吉; 于欣汝; 张旗 | 5h | 5h | 154.85 | 154.85 |  |  |
| 100 | 1.7.4.10 | 需求规格说明书--初步 | milestone, manual | 0d | 2017-11-28 20:00 | 2017-11-28 20:00 | 96 |  |  | 于欣汝 |  |  |  |  | 于欣汝 | 编写初步需求规格说明书 |
| 101 | 1.7.5 | **需求验证** |  | 16d | 2017-11-27 20:00 | 2017-12-08 21:00 | 65 |  |  |  | 46h |  | 1,424.62 |  | 张旗 |  |
| 102 | 1.7.5.1 | 小组第九周第一次会议 | manual | 1h | 2017-11-27 17:00 | 2017-11-27 18:00 |  |  |  | 曾雨晴; 靳泽旭; 奕吉; 于欣汝; 张旗 | 5h |  | 154.85 |  |  | 小组周一会议 |
| 103 | 1.7.5.2 | 评审需求 | manual | 10h | 2017-11-28 20:00 | 2017-12-03 21:00 | 37 |  |  | 奕吉 | 10h |  | 309.7 |  | 奕吉 | 对需求进行评审 |
| 104 | 1.7.5.3 | 测试需求 | manual | 10h | 2017-11-29 20:00 | 2017-12-04 21:00 | 37 |  |  | 于欣汝 | 10h |  | 309.7 |  | 于欣汝 | 对需求进行测试 |
| 105 | 1.7.5.4 | 定义验收条件 | manual | 5h | 2017-11-30 20:00 | 2017-12-02 21:00 |  |  |  | 曾雨晴 | 5h |  | 154.85 |  | 曾雨晴 | 对验收条件进行定义编写 |
| 106 | 1.7.5.5 | 小组第九周第二次会议 | milestone, manual | 0h | 2017-12-01 20:00 | 2017-12-01 21:00 |  |  |  | 曾雨晴; 靳泽旭; 奕吉; 于欣汝; 张旗 | 1h |  | 30.97 |  |  | 小组周五会议 |
| 107 | 1.7.5.6 | 模拟需求 | manual | 7h | 2017-12-02 18:00 | 2017-12-04 21:00 | 105 |  |  | 靳泽旭 | 7h |  | 216.79 |  | 靳泽旭 | 对需求进行模拟 |
| 108 | 1.7.5.7 | 小组第十周第一次会议 | manual | 1h | 2017-12-04 17:00 | 2017-12-04 18:00 |  |  |  | 曾雨晴; 靳泽旭; 奕吉; 于欣汝; 张旗 | 3h |  | 92.91 |  |  | 小组周一会议 |
| 109 | 1.7.5.8 | 软件需求规格说书 | milestone, manual | 0d | 2017-11-28 20:00 | 2017-11-28 20:00 | 100 |  |  | 张旗 |  |  |  |  | 张旗 | 使用户和软件开发者双方对软件的初始规定有共同的理解 |
| 110 | 1.7.5.9 | 小组第十周第二次会议 | manual | 1h | 2017-12-08 20:00 | 2017-12-08 21:00 |  |  |  | 曾雨晴; 靳泽旭; 奕吉; 于欣汝; 张旗 | 5h |  | 154.85 |  |  | 小组周五会议 |
| 111 | 1.7.6 | **需求管理** |  | 28h | 2017-12-11 20:00 | 2017-12-30 21:00 | 101 |  |  |  | 54h |  | 1,672.38 |  | 曾雨晴 |  |
| 112 | 1.7.6.1 | 小组第十一周第一次会议 | manual | 1h | 2017-12-11 17:00 | 2017-12-11 18:00 |  |  |  | 曾雨晴; 靳泽旭; 奕吉; 于欣汝; 张旗 | 5h |  | 154.85 |  |  | 小组周一会议 |
| 113 | 1.7.6.2 | 建立变更控制流程 | manual | 3h | 2017-12-12 20:00 | 2017-12-14 21:00 |  |  |  | 张旗 | 3h |  | 92.91 |  | 张旗 | 对变更控制进行管理 |
| 114 | 1.7.6.3 | 建立基线、管理需求版本 | manual | 3h | 2017-12-18 20:00 | 2017-12-20 21:00 | 113FS+7h |  |  | 曾雨晴 | 3h |  | 92.91 |  | 曾雨晴 | 建立基线、管理需求版本 |
| 115 | 1.7.6.4 | 分析变更影响 | manual | 3h | 2017-12-12 20:00 | 2017-12-14 21:00 |  |  |  | 奕吉 | 3h |  | 92.91 |  | 奕吉 | 对变更后的影响进行分析 |
| 116 | 1.7.6.5 | 小组第十一周第二次会议 | manual | 1h | 2017-12-15 20:00 | 2017-12-15 21:00 |  |  |  | 曾雨晴; 靳泽旭; 奕吉; 于欣汝; 张旗 | 5h |  | 154.85 |  |  | 小组周五会议 |
| 117 | 1.7.6.6 | 维护变更历史 | manual | 4h | 2017-12-18 20:00 | 2017-12-21 21:00 |  |  |  | 于欣汝 | 4h |  | 123.88 |  | 于欣汝 | 把每次的变更历史经行排列维护 |
| 118 | 1.7.6.7 | 小组第十二周第一次会议 | manual | 1h | 2017-12-17 17:00 | 2017-12-17 18:00 |  |  |  | 曾雨晴; 靳泽旭; 奕吉; 于欣汝; 张旗 | 5h |  | 154.85 |  |  | 小组周一会议 |
| 119 | 1.7.6.8 | 跟踪需求状态 | manual | 5h | 2017-12-17 20:00 | 2017-12-21 21:00 |  |  |  | 张旗 | 5h |  | 154.85 |  | 张旗 | 跟踪需求状态 |
| 120 | 1.7.6.9 | 跟踪需求问题 | manual | 4h | 2017-12-18 20:00 | 2017-12-21 21:00 |  |  |  | 靳泽旭 | 4h |  | 123.88 |  | 靳泽旭 | 跟踪需求问题 |
| 121 | 1.7.6.10 | 维护需求可跟踪矩阵 | manual | 2h | 2017-12-19 20:00 | 2017-12-20 21:00 |  |  |  | 奕吉 | 2h |  | 61.94 |  | 奕吉 | 维护需求可跟踪矩阵 |
| 122 | 1.7.6.11 | 小组第十二周第二次会议 | manual | 1h | 2017-12-22 20:00 | 2017-12-22 21:00 |  |  |  | 曾雨晴; 靳泽旭; 奕吉; 于欣汝; 张旗 | 5h |  | 154.85 |  |  | 小组周五会议 |
| 123 | 1.7.6.12 | 使用需求管理工具 | manual | 4h | 2017-12-23 20:00 | 2017-12-24 21:00 |  |  |  | 张旗 | 4h |  | 123.88 |  | 张旗 | IBM rational doors |
| 124 | 1.7.6.13 | 软件需求变更文档 | milestone, manual | 0d | 2017-12-25 20:00 | 2017-12-25 20:00 | 123 |  |  | 曾雨晴 |  |  |  |  | 曾雨晴 | 需求变更的文档 |
| 125 | 1.7.6.14 | 小组第十三周第一次会议 | manual | 1h | 2017-12-25 17:00 | 2017-12-25 18:00 |  |  |  | 曾雨晴; 靳泽旭; 奕吉; 于欣汝; 张旗 | 5h |  | 154.85 |  |  | 小组周一会议 |
| 126 | 1.7.6.15 | 软件需求变更文档修改 | manual | 1h | 2017-12-27 20:00 | 2017-12-27 21:00 | 109FS+45h |  |  | 奕吉 [50%]; 张旗 [50%] | 1h |  | 30.97 |  | 奕吉 | 对需要变更的需求文档进行修改 |

| ID | WBS | Task | Type | Duration | Start | Finish | Predecessors | Resources | Work | Cost | 总负责人 | 任务描述 |
| --- | --- | --- | --- | --- | --- | --- | --- | --- | --- | --- | --- | --- |
| 127 | 1.8 | **概要设计** |  | 18d | 2017-12-25 20:00 | 2018-01-10 21:00 | 33 |  | 23h | 712.31 | 曾雨晴 |  |
| 128 | 1.8.1 | 方案选择 | manual | 1h | 2017-12-26 20:00 | 2017-12-26 21:00 |  | 奕吉 | 1h | 30.97 | 奕吉 | 对可行的方案进行分析，选择最优方案 |
| 129 | 1.8.2 | 功能分解（IPO图）绘制 | manual | 3h | 2017-12-26 20:00 | 2017-12-28 21:00 |  | 曾雨晴 [50%]; 于欣汝 [50%] | 3h | 92.91 | 曾雨晴 | 网站功能剖析分类绘制 |
| 130 | 1.8.3 | 软件结构设计 | manual | 3h | 2018-01-02 20:00 | 2018-01-04 21:00 |  | 于欣汝 | 3h | 92.91 | 于欣汝 | 对网站结构进行设计 |
| 131 | 1.8.4 | 小组第十三周第二次会议 | manual | 1h | 2017-12-29 20:00 | 2017-12-29 21:00 |  | 曾雨晴; 靳泽旭; 奕吉; 于欣汝; 张旗 | 5h | 154.85 |  | 小组周五会议 |
| 132 | 1.8.5 | 数据库设计 | manual | 2h | 2018-01-02 20:00 | 2018-01-03 21:00 |  | 张旗 | 2h | 61.94 | 张旗 | 对网站后台数据库进行设计 |
| 133 | 1.8.6 | 小组第十四周第一次会议 | manual | 1h | 2018-01-05 20:00 | 2018-01-05 21:00 |  | 曾雨晴; 靳泽旭; 奕吉; 于欣汝; 张旗 | 5h | 154.85 |  | 小组周一会议 |
| 134 | 1.8.7 | 系统设计与实现计划 | milestone, manual | 0h | 2018-01-07 20:00 | 2018-01-07 20:00 | 126FS+11h | 于欣汝 |  |  | 于欣汝 | 系统设计和实现计划 |
| 135 | 1.8.8 | 软件概要设计说明--初步 | milestone, manual | 0h | 2018-01-08 20:00 | 2018-01-08 20:00 | 131FS+8h | 靳泽旭 |  |  | 靳泽旭 | 编写用户研究和设计的初步草稿版 |
| 136 | 1.8.9 | 软件概要设计说明--修改 | manual | 5h | 2018-01-08 18:00 | 2018-01-10 21:00 |  | 奕吉 [20%]; 曾雨晴 [20%]; 于欣汝 [20%]; 张旗 [20%] | 4h | 123.88 | 奕吉 | 编写修改后的版本 |
| 137 | 1.8.10 | 软件概要设计说明 | milestone, manual | 0d | 2018-01-08 20:00 | 2018-01-08 20:00 |  | 靳泽旭 |  |  | 靳泽旭 | 软件概要设计完整版，使用户研究和设计无缝连接 |
| 138 | 1.9 | **项目总结** |  | 9d | 2018-01-11 20:00 | 2018-01-15 21:00 | 127 |  | 2h | 61.94 | 奕吉 |  |
| 139 | 1.9.1 | 项目分析 | manual | 1d | 2018-01-11 20:00 | 2018-01-11 21:00 | 127 | 曾雨晴 | 1h | 30.97 |  |  |
| 140 | 1.9.2 | 总结ppt | manual | 1d | 2018-01-12 20:00 | 2018-01-12 21:00 | 139 | 于欣汝 | 1h | 30.97 |  |  |
| 141 | 1.9.3 | 项目总结报告 | milestone, manual | 0h | 2018-01-14 20:00 | 2018-01-14 20:00 |  | 奕吉 |  |  |  |  |
